# Gantt2.0

Schedule from MS Project, 2015-04-12 to 2015-12-19, status date 2015-06-07, 5 hours a day, A marks actual dates.

## Calendars

- AsociateYa: Mon-Fri 09:00-13:00, 15:00-19:00; Sat-Sun off.

## Resources

| Resource | Group |
| --- | --- |
| Croci-ANALISTA FUNCIONAL | ANALISTA FUNCIONAL |
| Budic-PROJECT MANAGER | PROJECT MANAGER |
| Tiberti-ADMINISTRADOR DE BASE DE DATOS | ADMINISTRADOR DE BASE DE DATOS |
| Tiberti-DESAROLLADOR | DESAROLLADOR |
| Budic-TESTER | TESTER |
| Croci-DISEÑADOR DE EXPERIENCIA DE USUARIO | DISEÑADOR DE EXPERIENCIA DE USUARIO |
| Rodriguez-ARQUITECTO DE SOFTWARE | ARQUITECTO DE SOFTWARE |
| Tiberti-ADMINISTRADOR DEL ENTORNO DE DESARROLLO | ADMINISTRADOR DEL ENTORNO DE DESARROLLO |
| Croci-DESAROLLADOR | DESAROLLADOR |
| Budic-DESAROLLADOR | DESAROLLADOR |
| Rodriguez-DESAROLLADOR | DESAROLLADOR |
| Budic-ANALISTA FUNCIONAL | ANALISTA FUNCIONAL |
| Rodriguez-PROJECT CONTROLLER | PROJECT CONTROLLER |

## Schedule

| ID | WBS | Task | Duration | Start | Finish | Predecessors | Complete | Remaining | Total slack | Free slack | Resources | Work | Actual work |
| --- | --- | --- | --- | --- | --- | --- | --- | --- | --- | --- | --- | --- | --- |
| 1 | 1 | **Análisis** | 15d | 2015-04-12 A | 2015-05-17 |  | 89% | 1.58d | 89.6d |  |  | 124h | 114.8h |
| 2 | 1.1 | **Riesgos** | 2.4d | 2015-04-12 A | 2015-04-18 A |  | 100% |  |  |  |  | 39h | 39h |
| 3 | 1.1.1 | Identificar los riegos | 2h | 2015-04-12 A | 2015-04-12 A |  | 100% |  |  |  | Budic-PROJECT MANAGER; Tiberti-ADMINISTRADOR DE BASE DE DATOS; Rodriguez-ARQUITECTO DE SOFTWARE; Rodriguez-PROJECT CONTROLLER; Budic-ANALISTA FUNCIONAL; Croci-DESAROLLADOR | 11h | 11h |
| 4 | 1.1.2 | Analizar los riegos | 3h | 2015-04-12 A | 2015-04-12 A | 3 | 100% |  |  |  | Budic-PROJECT MANAGER; Tiberti-ADMINISTRADOR DE BASE DE DATOS; Rodriguez-ARQUITECTO DE SOFTWARE; Rodriguez-PROJECT CONTROLLER; Budic-ANALISTA FUNCIONAL; Croci-DESAROLLADOR | 12h | 12h |
| 5 | 1.1.3 | Planificación de riesgos | 6h | 2015-04-12 A | 2015-04-18 A | 4 | 100% |  |  |  | Budic-PROJECT MANAGER; Rodriguez-PROJECT CONTROLLER; Budic-ANALISTA FUNCIONAL | 14h | 14h |
| 6 | 1.1.4 | Completar tabla de riesgos | 1h | 2015-04-18 A | 2015-04-18 A | 5 | 100% |  |  |  | Budic-PROJECT MANAGER; Rodriguez-PROJECT CONTROLLER | 2h | 2h |
| 7 | 1.2 | **Planificación** | 9d | 2015-04-19 A | 2015-05-10 |  | 81% | 1.67d | 91.6d |  |  | 54h | 44.8h |
| 8 | 1.2.1 | Identificar las tareas para cada entregable | 8h | 2015-04-19 A | 2015-04-25 | 21 | 80% | 1.6h | 0.64d | 0d | Budic-PROJECT MANAGER | 8h | 6.4h |
| 9 | 1.2.2 | Definir las precedencias | 4h | 2015-04-25 A | 2015-04-26 | 8 | 80% | 0.8h | 0.48d | 0d | Budic-PROJECT MANAGER | 4h | 3.2h |
| 10 | 1.2.3 | Estimar los tiempos de cada tarea | 3h | 2015-04-26 A | 2015-04-26 | 9 | 80% | 0.6h | 4.4d | 0.4d | Budic-PROJECT MANAGER; Tiberti-ADMINISTRADOR DE BASE DE DATOS; Tiberti-ADMINISTRADOR DEL ENTORNO DE DESARROLLO; Croci-ANALISTA FUNCIONAL; Rodriguez-ARQUITECTO DE SOFTWARE; Budic-TESTER; Croci-DISEÑADOR DE EXPERIENCIA DE USUARIO | 14h | 12.2h |
| 11 | 1.2.4 | Calcular el camino crítico | 3h | 2015-05-10 A | 2015-05-10 A | 12 | 100% |  |  |  | Rodriguez-PROJECT CONTROLLER | 3h | 3h |
| 12 | 1.2.5 | Realizar diagrama de Gantt | 25h | 2015-04-28 A | 2015-05-10 | 10 | 80% | 5h | 92.2d |  | Rodriguez-PROJECT CONTROLLER | 25h | 20h |
| 13 | 1.3 | **Roles y Responsabilidades** | 1d | 2015-05-10 A | 2015-05-12 A |  | 100% |  |  |  |  | 7h | 7h |
| 14 | 1.3.1 | Identificar roles | 2h | 2015-05-10 A | 2015-05-10 A | 12 | 100% |  |  |  | Budic-PROJECT MANAGER; Croci-ANALISTA FUNCIONAL | 4h | 4h |
| 15 | 1.3.2 | Asignar responsabilidades a los roles | 3h | 2015-05-10 A | 2015-05-12 A | 14 | 100% |  |  |  | Budic-PROJECT MANAGER | 3h | 3h |
| 16 | 1.4 | **Habilidades y Competencias** | 1.2d | 2015-05-12 A | 2015-05-16 A |  | 100% |  |  |  |  | 6h | 6h |
| 17 | 1.4.1 | Asignar competencias a los roles | 6h | 2015-05-12 A | 2015-05-16 A | 15 | 100% |  |  |  | Budic-PROJECT MANAGER | 6h | 6h |
| 18 | 1.5 | **Comunicación** | 0.4d | 2015-05-16 A | 2015-05-17 A |  | 100% |  |  |  |  | 2h | 2h |
| 19 | 1.5.1 | Establecer canales de comunicación entre roles | 2h | 2015-05-16 A | 2015-05-17 A | 17 | 100% |  |  |  | Budic-PROJECT MANAGER | 2h | 2h |
| 20 | 1.6 | **WBS** | 1.6d | 2015-04-18 A | 2015-04-19 A |  | 100% |  |  |  |  | 16h | 16h |
| 21 | 1.6.1 | Definir entregables | 8h | 2015-04-18 A | 2015-04-19 A | 6 | 100% |  |  |  | Budic-PROJECT MANAGER; Croci-ANALISTA FUNCIONAL | 16h | 16h |
| 22 | 2 | **Diseño** | 28d | 2015-04-25 A | 2015-06-28 |  | 36% | 18.02d | 69.4d |  |  | 197h | 78.5h |
| 23 | 2.1 | **Casos de Uso** | 16.8d | 2015-05-12 A | 2015-06-21 |  | 44% | 9.44d | 3d |  |  | 104h | 54.5h |
| 24 | 2.1.1 | Identificar actores y funcionalidades | 25h | 2015-05-12 A | 2015-05-24 | 21, 13 | 75% | 6.25h | 0.8d | 0d | Croci-ANALISTA FUNCIONAL; Budic-ANALISTA FUNCIONAL | 50h | 37.5h |
| 25 | 2.1.2 | Describir casos de uso | 48h | 2015-05-24 A | 2015-06-21 | 24 | 25% | 36h | 0d |  | Croci-ANALISTA FUNCIONAL; Budic-PROJECT MANAGER | 50h | 14h |
| 26 | 2.1.3 | Describir las relaciones entre los actores y casos de uso | 4h | 2015-06-14 A | 2015-06-21 | 24, 25 | 75% | 1h | 3d | 0d | Croci-ANALISTA FUNCIONAL; Budic-ANALISTA FUNCIONAL | 4h | 3h |

| ID | WBS | Task | Duration | Start | Finish | Predecessors | Complete | Remaining | Total slack | Free slack | Resources | Work | Actual work |
| --- | --- | --- | --- | --- | --- | --- | --- | --- | --- | --- | --- | --- | --- |
| 27 | 2.2 | **DER** | 11.6d | 2015-05-24 A | 2015-06-21 |  | 36% | 7.38d | 3.2d |  |  | 38h | 18h |
| 28 | 2.2.1 | Definir entidades y sus atributos | 8h | 2015-05-24 A | 2015-05-29 | 24 | 50% | 4h | 8d | 0d | Tiberti-ADMINISTRADOR DE BASE DE DATOS; Croci-ANALISTA FUNCIONAL; Rodriguez-ARQUITECTO DE SOFTWARE; Budic-PROJECT MANAGER | 24h | 14h |
| 29 | 2.2.2 | Describir las relaciones entre las entidades | 8h | 2015-05-29 A | 2015-06-18 | 28 | 50% | 4h | 3.2d | 0d | Tiberti-ADMINISTRADOR DE BASE DE DATOS; Croci-ANALISTA FUNCIONAL | 8h | 4h |
| 30 | 2.2.3 | Normalizar DER | 6h | 2015-06-18 | 2015-06-21 | 29 |  |  | 3.2d | 0d | Tiberti-ADMINISTRADOR DE BASE DE DATOS | 6h |  |
| 31 | 2.3 | **Maqueta del Front-End** | 2d | 2015-06-21 | 2015-06-26 |  |  |  | 71d | 11.6d |  | 10h |  |
| 32 | 2.3.1 | Diseñar disposición de elementos estéticamente | 10h | 2015-06-21 | 2015-06-26 | 30 |  |  | 71d |  | Croci-DISEÑADOR DE EXPERIENCIA DE USUARIO | 10h |  |
| 33 | 2.4 | **Documento De Arquitectura** | 1.6d | 2015-04-25 A | 2015-04-27 |  | 75% | 0.4d | 6d |  |  | 8h | 6h |
| 34 | 2.4.1 | Definir arquitectura de software | 8h | 2015-04-25 A | 2015-04-27 | 8 | 75% | 2h | 6d | 0d | Rodriguez-ARQUITECTO DE SOFTWARE | 8h | 6h |
| 35 | 2.5 | **Especificación de la BD** | 3.4d | 2015-06-21 | 2015-06-28 |  |  |  | 3d |  |  | 37h |  |
| 36 | 2.5.1 | Diseño de tablas de la BD | 6h | 2015-06-21 | 2015-06-23 | 30, 26 |  |  | 3d | 0d | Tiberti-ADMINISTRADOR DE BASE DE DATOS; Croci-ANALISTA FUNCIONAL; Rodriguez-ARQUITECTO DE SOFTWARE | 18h |  |
| 37 | 2.5.2 | Definir tipo y volumen de datos | 3h | 2015-06-26 | 2015-06-27 | 38 |  |  | 3d | 0d | Tiberti-ADMINISTRADOR DE BASE DE DATOS | 3h |  |
| 38 | 2.5.3 | Relaciones entre las tablas de la BD | 3h | 2015-06-23 | 2015-06-26 | 36 |  |  | 3d | 0d | Tiberti-ADMINISTRADOR DE BASE DE DATOS | 3h |  |
| 39 | 2.5.4 | Definir políticas de seguridad e integridad | 5h | 2015-06-27 | 2015-06-28 | 37 |  |  | 3d | 0d | Tiberti-ADMINISTRADOR DE BASE DE DATOS; Croci-ANALISTA FUNCIONAL; Rodriguez-ARQUITECTO DE SOFTWARE | 13h |  |
| 40 | 3 | **Desarrollo** | 90.6d? | 2015-04-27 A | 2015-11-26 |  | 8% | 83.3d? | 10.1d |  |  | 1626h | 120h |
| 41 | 3.1 | Capacitación en HTML | 120h | 2015-04-27 A | 2015-06-22 | 34 | 25% | 90h | 0d |  | Tiberti-DESAROLLADOR | 120h | 30h |
| 42 | 3.2 | Capacitación en Java | 120h | 2015-04-27 A | 2015-06-22 | 34 | 25% | 90h | 0d |  | Croci-DESAROLLADOR | 120h | 30h |
| 43 | 3.3 | Capacitación en CSS | 120h | 2015-04-27 A | 2015-06-22 | 34 | 25% | 90h | 76.7d |  | Budic-DESAROLLADOR | 120h | 30h |
| 44 | 3.4 | Capacitación en PHP | 120h | 2015-04-27 A | 2015-06-22 | 34 | 25% | 90h | 2d | 0d | Rodriguez-DESAROLLADOR | 120h | 30h |
| 45 | 3.5 | **Escribir código de Plantillas** | 63.4d? | 2015-06-22 | 2015-11-18 |  |  |  | 0d |  |  | 220h |  |
| 46 | 3.5.1 | Inscribirse al portal | 11h? | 2015-06-22 | 2015-06-28 | 41 |  |  | 0d |  | Budic-DESAROLLADOR | 11h |  |
| 47 | 3.5.2 | Autenticarse como usuario | 11h? | 2015-06-28 | 2015-07-04 | 46 |  |  | 0d |  | Budic-DESAROLLADOR | 11h |  |
| 48 | 3.5.3 | Modificar Usuario | 11h? | 2015-07-04 | 2015-07-09 | 47 |  |  | 0d |  | Budic-DESAROLLADOR | 11h |  |
| 49 | 3.5.4 | Dar de baja Usuario | 11h? | 2015-07-09 | 2015-07-12 | 48 |  |  | 0d |  | Budic-DESAROLLADOR | 11h |  |
| 50 | 3.5.5 | Inscribirse como emprendedor | 11h? | 2015-07-22 | 2015-07-26 | 130 |  |  | 0d |  | Budic-DESAROLLADOR | 11h |  |
| 51 | 3.5.6 | Aprobar inscripción como emprendedor | 11h? | 2015-08-01 | 2015-08-07 | 50 |  |  | 0d |  | Budic-DESAROLLADOR | 11h |  |
| 52 | 3.5.7 | Aplicar para crear emprendimiento | 11h? | 2015-08-07 | 2015-08-10 | 51 |  |  | 0d |  | Budic-DESAROLLADOR | 11h |  |
| 53 | 3.5.8 | Aprobar emprendimiento | 11h? | 2015-08-10 | 2015-08-16 | 52 |  |  | 0d |  | Budic-DESAROLLADOR | 11h |  |
| 54 | 3.5.9 | Modificar emprendimiento | 11h? | 2015-08-16 | 2015-08-22 | 53 |  |  | 0d |  | Budic-DESAROLLADOR | 11h |  |
| 55 | 3.5.10 | Dar de baja emprendimiento | 11h? | 2015-08-26 | 2015-08-30 | 54 |  |  | 0d |  | Budic-DESAROLLADOR | 11h |  |
| 56 | 3.5.11 | Solicitar asociación a emprendimiento | 11h? | 2015-09-06 | 2015-09-12 | 131 |  |  | 0d |  | Budic-DESAROLLADOR | 11h |  |
| 57 | 3.5.12 | Responder a inversor | 11h? | 2015-09-15 | 2015-09-20 | 56 |  |  | 0d |  | Budic-DESAROLLADOR | 11h |  |
| 58 | 3.5.13 | Aceptar solicitud de asociación | 11h? | 2015-09-20 | 2015-09-26 | 57 |  |  | 0d |  | Budic-DESAROLLADOR | 11h |  |
| 59 | 3.5.14 | Consultar información a emprendedor | 11h? | 2015-09-26 | 2015-10-02 | 58 |  |  | 0d |  | Budic-DESAROLLADOR | 11h |  |
| 60 | 3.5.15 | Buscar/filtrar emprendimientos | 11h? | 2015-10-04 | 2015-10-11 | 59 |  |  | 0d |  | Budic-DESAROLLADOR | 11h |  |
| 61 | 3.5.16 | Promocionar emprendimiento | 11h? | 2015-10-11 | 2015-10-17 | 60 |  |  | 0d |  | Budic-DESAROLLADOR | 11h |  |
| 62 | 3.5.17 | Configurar seguimiento de emprendimiento | 11h? | 2015-10-24 | 2015-10-30 | 132 |  |  | 0d |  | Budic-DESAROLLADOR | 11h |  |
| 63 | 3.5.18 | Crear Agenda | 11h? | 2015-11-01 | 2015-11-08 | 62 |  |  | 0d |  | Budic-DESAROLLADOR | 11h |  |
| 64 | 3.5.19 | Modificar agenda | 11h? | 2015-11-08 | 2015-11-14 | 63 |  |  | 0d |  | Budic-DESAROLLADOR | 11h |  |
| 65 | 3.5.20 | Difundir Mail | 11h? | 2015-11-14 | 2015-11-18 | 64 |  |  | 0d |  | Budic-DESAROLLADOR | 11h |  |

| ID | WBS | Task | Duration | Start | Finish | Predecessors | Total slack | Free slack | Resources | Work |
| --- | --- | --- | --- | --- | --- | --- | --- | --- | --- | --- |
| 66 | 3.6 | **Escribir código JavaScript** | 63.4d? | 2015-06-22 | 2015-11-18 |  | 0d |  |  | 210h |
| 67 | 3.6.1 | Inscribirse al portal | 20h? | 2015-06-22 | 2015-07-04 | 42 | 0d |  | Croci-DESAROLLADOR | 20h |
| 68 | 3.6.2 | Autenticarse como usuario | 10h? | 2015-07-04 | 2015-07-06 | 67 | 0d |  | Croci-DESAROLLADOR | 10h |
| 69 | 3.6.3 | Modificar Usuario | 10h? | 2015-07-12 | 2015-07-18 | 68 | 0d |  | Croci-DESAROLLADOR | 10h |
| 70 | 3.6.4 | Dar de baja Usuario | 10h? | 2015-07-22 | 2015-07-26 | 69 | 0d |  | Croci-DESAROLLADOR | 10h |
| 71 | 3.6.5 | Inscribirse como emprendedor | 10h? | 2015-08-01 | 2015-08-06 | 135 | 0d |  | Croci-DESAROLLADOR | 10h |
| 72 | 3.6.6 | Aprobar inscripción como emprendedor | 10h? | 2015-08-06 | 2015-08-09 | 71 | 0d |  | Croci-DESAROLLADOR | 10h |
| 73 | 3.6.7 | Aplicar para crear emprendimiento | 10h? | 2015-08-09 | 2015-08-15 | 72 | 0d |  | Croci-DESAROLLADOR | 10h |
| 74 | 3.6.8 | Aprobar emprendimiento | 10h? | 2015-08-20 | 2015-08-23 | 73 | 0d |  | Croci-DESAROLLADOR | 10h |
| 75 | 3.6.9 | Modificar emprendimiento | 10h? | 2015-08-23 | 2015-08-29 | 74 | 0d |  | Croci-DESAROLLADOR | 10h |
| 76 | 3.6.10 | Dar de baja emprendimiento | 10h? | 2015-08-29 | 2015-09-07 | 75 | 0d |  | Croci-DESAROLLADOR | 10h |
| 77 | 3.6.11 | Solicitar asociación a emprendimiento | 10h? | 2015-09-15 | 2015-09-20 | 136 | 0d |  | Croci-DESAROLLADOR | 10h |
| 78 | 3.6.12 | Responder a inversor | 10h? | 2015-09-20 | 2015-09-26 | 77 | 0d |  | Croci-DESAROLLADOR | 10h |
| 79 | 3.6.13 | Aceptar solicitud de asociación | 10h? | 2015-09-26 | 2015-09-29 | 78 | 0d |  | Croci-DESAROLLADOR | 10h |
| 80 | 3.6.14 | Consultar información a emprendedor | 10h? | 2015-10-04 | 2015-10-10 | 79 | 0d |  | Croci-DESAROLLADOR | 10h |
| 81 | 3.6.15 | Buscar/filtrar emprendimientos | 10h? | 2015-10-10 | 2015-10-13 | 80 | 0d |  | Croci-DESAROLLADOR | 10h |
| 82 | 3.6.16 | Promocionar emprendimiento | 10h? | 2015-10-13 | 2015-10-18 | 81 | 0d |  | Croci-DESAROLLADOR | 10h |
| 83 | 3.6.17 | Configurar seguimiento de emprendimiento | 10h? | 2015-10-25 | 2015-10-31 | 137 | 0d |  | Croci-DESAROLLADOR | 10h |
| 84 | 3.6.18 | Crear Agenda | 10h? | 2015-11-04 | 2015-11-08 | 83 | 0d |  | Croci-DESAROLLADOR | 10h |
| 85 | 3.6.19 | Modificar agenda | 10h? | 2015-11-08 | 2015-11-14 | 84 | 0d |  | Croci-DESAROLLADOR | 10h |
| 86 | 3.6.20 | Difundir Mail | 10h? | 2015-11-14 | 2015-11-18 | 85 | 0d |  | Croci-DESAROLLADOR | 10h |
| 87 | 3.7 | **Escribir código PHP** | 62.8d? | 2015-06-22 | 2015-11-15 |  | 0.6d |  |  | 180h |
| 88 | 3.7.1 | Inscribirse al portal | 9h? | 2015-06-22 | 2015-06-28 | 44 | 2d | 0d | Rodriguez-DESAROLLADOR | 9h |
| 89 | 3.7.2 | Autenticarse como usuario | 9h? | 2015-07-19 | 2015-07-25 | 145 | 2.4d | 0d | Rodriguez-DESAROLLADOR | 9h |
| 90 | 3.7.3 | Modificar Usuario | 9h? | 2015-07-25 | 2015-07-26 | 89 | 2.4d | 0d | Rodriguez-DESAROLLADOR | 9h |
| 91 | 3.7.4 | Dar de baja Usuario | 9h? | 2015-07-26 | 2015-08-01 | 90 | 2.4d | 0d | Rodriguez-DESAROLLADOR | 9h |
| 92 | 3.7.5 | Inscribirse como emprendedor | 9h? | 2015-08-01 | 2015-08-05 | 91 | 2.4d | 0d | Rodriguez-DESAROLLADOR | 9h |
| 93 | 3.7.6 | Aprobar inscripción como emprendedor | 9h? | 2015-08-05 | 2015-08-09 | 92 | 2.4d | 0d | Rodriguez-DESAROLLADOR | 9h |
| 94 | 3.7.7 | Aplicar para crear emprendimiento | 9h? | 2015-08-09 | 2015-08-15 | 93 | 2.4d | 0d | Rodriguez-DESAROLLADOR | 9h |
| 95 | 3.7.8 | Aprobar emprendimiento | 9h? | 2015-08-26 | 2015-08-30 | 146 | 1.8d | 0d | Rodriguez-DESAROLLADOR | 9h |
| 96 | 3.7.9 | Modificar emprendimiento | 9h? | 2015-08-30 | 2015-09-09 | 95 | 1.8d | 0d | Rodriguez-DESAROLLADOR | 9h |
| 97 | 3.7.10 | Dar de baja emprendimiento | 9h? | 2015-09-09 | 2015-09-13 | 96 | 1.8d | 0d | Rodriguez-DESAROLLADOR | 9h |
| 98 | 3.7.11 | Solicitar asociación a emprendimiento | 9h? | 2015-09-13 | 2015-09-19 | 97 | 1.8d | 0d | Rodriguez-DESAROLLADOR | 9h |
| 99 | 3.7.12 | Responder a inversor | 9h? | 2015-09-19 | 2015-09-20 | 98 | 1.8d | 0d | Rodriguez-DESAROLLADOR | 9h |
| 100 | 3.7.13 | Aceptar solicitud de asociación | 9h? | 2015-09-20 | 2015-09-26 | 99 | 1.8d | 0d | Rodriguez-DESAROLLADOR | 9h |
| 101 | 3.7.14 | Consultar información a emprendedor | 9h? | 2015-10-04 | 2015-10-10 | 147 | 0.8d | 0d | Rodriguez-DESAROLLADOR | 9h |
| 102 | 3.7.15 | Buscar/filtrar emprendimientos | 9h? | 2015-10-10 | 2015-10-14 | 101 | 0.8d | 0d | Rodriguez-DESAROLLADOR | 9h |
| 103 | 3.7.16 | Promocionar emprendimiento | 9h? | 2015-10-14 | 2015-10-18 | 102 | 0.8d | 0d | Rodriguez-DESAROLLADOR | 9h |
| 104 | 3.7.17 | Configurar seguimiento de emprendimiento | 9h? | 2015-10-24 | 2015-10-28 | 103 | 0.2d | 0d | Rodriguez-DESAROLLADOR | 9h |
| 105 | 3.7.18 | Crear Agenda | 9h? | 2015-11-04 | 2015-11-08 | 148 | 0.6d | 0d | Rodriguez-DESAROLLADOR | 9h |
| 106 | 3.7.19 | Modificar agenda | 9h? | 2015-11-08 | 2015-11-14 | 105 | 0.6d | 0d | Rodriguez-DESAROLLADOR | 9h |
| 107 | 3.7.20 | Difundir Mail | 9h? | 2015-11-14 | 2015-11-15 | 106 | 0.6d |  | Rodriguez-DESAROLLADOR | 9h |

| ID | WBS | Task | Duration | Start | Finish | Predecessors | Total slack | Free slack | Resources | Work |
| --- | --- | --- | --- | --- | --- | --- | --- | --- | --- | --- |
| 108 | 3.8 | **Escribir script de la base de datos** | 58.2d? | 2015-06-28 | 2015-11-12 |  | 2.8d |  |  | 220h |
| 109 | 3.8.1 | Inscribirse al portal | 9h? | 2015-06-28 | 2015-07-04 | 39 | 3d | 0d | Tiberti-DESAROLLADOR; Rodriguez-ARQUITECTO DE SOFTWARE | 11h |
| 110 | 3.8.2 | Autenticarse como usuario | 9h? | 2015-07-04 | 2015-07-06 | 109 | 3d | 0d | Tiberti-DESAROLLADOR; Rodriguez-ARQUITECTO DE SOFTWARE | 11h |
| 111 | 3.8.3 | Modificar Usuario | 9h? | 2015-07-06 | 2015-07-12 | 110 | 3d | 0d | Tiberti-DESAROLLADOR; Rodriguez-ARQUITECTO DE SOFTWARE | 11h |
| 112 | 3.8.4 | Dar de baja Usuario | 9h? | 2015-07-12 | 2015-07-16 | 111 | 3d | 0d | Tiberti-DESAROLLADOR; Rodriguez-ARQUITECTO DE SOFTWARE | 11h |
| 113 | 3.8.5 | Inscribirse como emprendedor | 11h? | 2015-07-28 | 2015-08-04 | 140 | 3d | 0d | Tiberti-DESAROLLADOR; Rodriguez-ARQUITECTO DE SOFTWARE | 11h |
| 114 | 3.8.6 | Aprobar inscripción como emprendedor | 9h? | 2015-08-04 | 2015-08-09 | 113 | 3d | 0d | Tiberti-DESAROLLADOR; Rodriguez-ARQUITECTO DE SOFTWARE | 11h |
| 115 | 3.8.7 | Aplicar para crear emprendimiento | 9h? | 2015-08-09 | 2015-08-14 | 114 | 3d | 0d | Tiberti-DESAROLLADOR; Rodriguez-ARQUITECTO DE SOFTWARE | 11h |
| 116 | 3.8.8 | Aprobar emprendimiento | 9h? | 2015-08-14 | 2015-08-16 | 115 | 3d | 0d | Tiberti-DESAROLLADOR; Rodriguez-ARQUITECTO DE SOFTWARE | 11h |
| 117 | 3.8.9 | Modificar emprendimiento | 9h? | 2015-08-16 | 2015-08-22 | 116 | 3d | 0d | Tiberti-DESAROLLADOR; Rodriguez-ARQUITECTO DE SOFTWARE | 11h |
| 118 | 3.8.10 | Dar de baja emprendimiento | 9h? | 2015-08-22 | 2015-08-25 | 117 | 3d | 0d | Tiberti-DESAROLLADOR; Rodriguez-ARQUITECTO DE SOFTWARE | 11h |
| 119 | 3.8.11 | Solicitar asociación a emprendimiento | 11h? | 2015-09-11 | 2015-09-18 | 141 | 3d | 0d | Tiberti-DESAROLLADOR; Rodriguez-ARQUITECTO DE SOFTWARE | 11h |
| 120 | 3.8.12 | Responder a inversor | 9h? | 2015-09-18 | 2015-09-20 | 119 | 3d | 0d | Tiberti-DESAROLLADOR; Rodriguez-ARQUITECTO DE SOFTWARE | 11h |
| 121 | 3.8.13 | Aceptar solicitud de asociación | 9h? | 2015-09-20 | 2015-09-26 | 120 | 3d | 0d | Tiberti-DESAROLLADOR; Rodriguez-ARQUITECTO DE SOFTWARE | 11h |
| 122 | 3.8.14 | Consultar información a emprendedor | 9h? | 2015-09-26 | 2015-09-29 | 121 | 3d | 0d | Tiberti-DESAROLLADOR; Rodriguez-ARQUITECTO DE SOFTWARE | 11h |
| 123 | 3.8.15 | Buscar/filtrar emprendimientos | 9h? | 2015-09-29 | 2015-10-04 | 122 | 3d | 0d | Tiberti-DESAROLLADOR; Rodriguez-ARQUITECTO DE SOFTWARE | 11h |
| 124 | 3.8.16 | Promocionar emprendimiento | 9h? | 2015-10-04 | 2015-10-09 | 123 | 3d | 0d | Tiberti-DESAROLLADOR; Rodriguez-ARQUITECTO DE SOFTWARE | 11h |
| 125 | 3.8.17 | Configurar seguimiento de emprendimiento | 9h? | 2015-10-25 | 2015-10-31 | 142 | 2.8d | 0d | Tiberti-DESAROLLADOR; Rodriguez-ARQUITECTO DE SOFTWARE | 11h |
| 126 | 3.8.18 | Crear Agenda | 9h? | 2015-10-31 | 2015-11-02 | 125 | 2.8d | 0d | Tiberti-DESAROLLADOR; Rodriguez-ARQUITECTO DE SOFTWARE | 11h |
| 127 | 3.8.19 | Modificar agenda | 9h? | 2015-11-02 | 2015-11-08 | 126 | 2.8d | 0d | Tiberti-DESAROLLADOR; Rodriguez-ARQUITECTO DE SOFTWARE | 11h |
| 128 | 3.8.20 | Difundir Mail | 9h? | 2015-11-08 | 2015-11-12 | 127 | 2.8d | 0d | Tiberti-DESAROLLADOR; Rodriguez-ARQUITECTO DE SOFTWARE | 11h |
| 129 | 3.9 | **Revisión de pares de Plantillas** | 57d? | 2015-07-12 | 2015-11-22 |  | 0d |  |  | 96h |
| 130 | 3.9.1 | Revision 1 | 18h? | 2015-07-12 | 2015-07-22 | 49 | 0d |  | Croci-DESAROLLADOR; Rodriguez-DESAROLLADOR | 24h |
| 131 | 3.9.2 | Revision 2 | 12h? | 2015-08-30 | 2015-09-06 | 55 | 0d |  | Croci-DESAROLLADOR; Rodriguez-DESAROLLADOR | 24h |
| 132 | 3.9.3 | Revision 3 | 12h? | 2015-10-18 | 2015-10-24 | 61 | 0d |  | Croci-DESAROLLADOR; Rodriguez-DESAROLLADOR | 24h |
| 133 | 3.9.4 | Revision 4 | 12h? | 2015-11-18 | 2015-11-22 | 65 | 10.9d |  | Croci-DESAROLLADOR; Rodriguez-DESAROLLADOR | 24h |

| ID | WBS | Task | Duration | Start | Finish | Predecessors | Total slack | Free slack | Constraint | Resources | Work |
| --- | --- | --- | --- | --- | --- | --- | --- | --- | --- | --- | --- |
| 134 | 3.10 | **Revisión de pares de JavaScript** | 51d? | 2015-07-26 | 2015-11-22 |  | 0d |  |  |  | 80h |
| 135 | 3.10.1 | Revision 1 | 11h? | 2015-07-26 | 2015-08-01 | 70 | 0d |  |  | Tiberti-DESAROLLADOR; Budic-DESAROLLADOR | 20h |
| 136 | 3.10.2 | Revision 2 | 16h? | 2015-09-07 | 2015-09-15 | 76 | 0d |  |  | Tiberti-DESAROLLADOR; Budic-DESAROLLADOR | 20h |
| 137 | 3.10.3 | Revision 3 | 10h? | 2015-10-18 | 2015-10-24 | 82 | 0d |  |  | Tiberti-DESAROLLADOR; Budic-DESAROLLADOR | 20h |
| 138 | 3.10.4 | Revision 4 | 10h? | 2015-11-18 | 2015-11-22 | 86 | 7.4d |  |  | Tiberti-DESAROLLADOR; Budic-DESAROLLADOR | 20h |
| 139 | 3.11 | **Revisión de pares de la base de datos** | 55.8d? | 2015-07-19 | 2015-11-26 |  | 3d | 0d |  |  | 32h |
| 140 | 3.11.1 | Revision 1 | 8h? | 2015-07-19 | 2015-07-28 | 112 | 3d | 0d |  | Budic-DESAROLLADOR; Croci-DESAROLLADOR | 8h |
| 141 | 3.11.2 | Revision 2 | 8h? | 2015-08-30 | 2015-09-11 | 118 | 3d | 0d |  | Budic-DESAROLLADOR; Croci-DESAROLLADOR | 8h |
| 142 | 3.11.3 | Revision 3 | 8h? | 2015-10-17 | 2015-10-25 | 124 | 2.8d | 0d |  | Budic-DESAROLLADOR; Croci-DESAROLLADOR | 8h |
| 143 | 3.11.4 | Revision 4 | 6h? | 2015-11-22 | 2015-11-26 | 128 | 6.2d |  |  | Budic-DESAROLLADOR; Croci-DESAROLLADOR | 8h |
| 144 | 3.12 | **Revisión de pares de PHP** | 51.4d? | 2015-07-06 | 2015-11-04 |  | 0.6d |  |  |  | 80h |
| 145 | 3.12.1 | Revision 1 | 20h? | 2015-07-06 | 2015-07-19 | 88 | 2.4d | 0d |  | Budic-DESAROLLADOR; Croci-DESAROLLADOR | 20h |
| 146 | 3.12.2 | Revision 2 | 20h? | 2015-08-15 | 2015-08-26 | 94 | 1.8d | 0d |  | Budic-DESAROLLADOR; Croci-DESAROLLADOR | 20h |
| 147 | 3.12.3 | Revision 3 | 13h? | 2015-09-29 | 2015-10-04 | 100 | 0.8d | 0d |  | Budic-DESAROLLADOR; Croci-DESAROLLADOR | 20h |
| 148 | 3.12.4 | Revision 4 | 13h? | 2015-10-30 | 2015-11-04 | 104 | 0.6d | 0d |  | Budic-DESAROLLADOR; Croci-DESAROLLADOR | 20h |
| 149 | 3.13 | **Promoción** | 3.6d | 2015-07-22 | 2015-08-01 |  | 59.4d |  |  |  | 28h |
| 150 | 3.13.1 | Realizar presentación comercial | 10h | 2015-07-26 | 2015-08-01 | 151 | 60.7d |  |  | Croci-ANALISTA FUNCIONAL; Croci-DISEÑADOR DE EXPERIENCIA DE USUARIO; Budic-PROJECT MANAGER | 20h |
| 151 | 3.13.2 | Realizar poster comercial | 8h | 2015-07-22 | 2015-07-26 | 31 | 59.4d | 0d | start no earlier than 2015-07-22 | Croci-DISEÑADOR DE EXPERIENCIA DE USUARIO | 8h |
| 152 | 4 | **Testing** | 74.4d | 2015-06-21 | 2015-12-12 |  | 3.3d |  |  |  | 82h |
| 153 | 4.1 | Armar el plan de pruebas | 8h | 2015-06-28 | 2015-07-04 | 154 | 72.7d |  |  | Croci-ANALISTA FUNCIONAL; Budic-PROJECT MANAGER | 16h |
| 154 | 4.2 | Definir los casos de prueba | 14h | 2015-06-21 | 2015-06-28 | 26, 30 | 70.4d | 0d |  | Croci-ANALISTA FUNCIONAL; Budic-PROJECT MANAGER | 16h |
| 155 | 4.3 | Ejecutar los casos de prueba | 40h | 2015-11-18 | 2015-12-06 | 45, 66, 87, 108 | 0d |  |  | Budic-TESTER | 40h |
| 156 | 4.4 | Documentar resultados de las pruebas | 10h | 2015-12-06 | 2015-12-12 | 155 | 0d |  |  | Budic-TESTER | 10h |
| 157 | 5 | **Manuales** | 0.6d | 2015-11-26 | 2015-11-28 |  | 6.2d |  |  |  | 8h |
| 158 | 5.1 | Redactar manual de instalación | 3h | 2015-11-26 | 2015-11-28 | 134, 139, 154 | 6.2d |  |  | Tiberti-ADMINISTRADOR DE BASE DE DATOS; Tiberti-ADMINISTRADOR DEL ENTORNO DE DESARROLLO; Tiberti-DESAROLLADOR | 8h |

| ID | WBS | Task | Duration | Start | Finish | Predecessors | Total slack | Resources | Work |
| --- | --- | --- | --- | --- | --- | --- | --- | --- | --- |
| 159 | 6 | **Finalización del Proyecto** | 3.3d | 2015-12-12 | 2015-12-19 |  | 0d |  | 54h |
| 160 | 6.1 | Reflexionar sobre la experiencia realizada | 1.5h | 2015-12-12 | 2015-12-12 | 158, 156, 6, 12, 15, 17, 19, 21, 26, 30, 32, 34, 39, 144, 151 | 0d | Tiberti-ADMINISTRADOR DE BASE DE DATOS; Tiberti-ADMINISTRADOR DEL ENTORNO DE DESARROLLO; Croci-ANALISTA FUNCIONAL; Rodriguez-ARQUITECTO DE SOFTWARE; Tiberti-DESAROLLADOR; Croci-DISEÑADOR DE EXPERIENCIA DE USUARIO; Budic-PROJECT MANAGER; Budic-TESTER | 12h |
| 161 | 6.2 | Analizar errores cometidos | 3h | 2015-12-12 | 2015-12-13 | 160 | 0d | Tiberti-ADMINISTRADOR DE BASE DE DATOS; Tiberti-ADMINISTRADOR DEL ENTORNO DE DESARROLLO; Croci-ANALISTA FUNCIONAL; Rodriguez-ARQUITECTO DE SOFTWARE; Tiberti-DESAROLLADOR; Croci-DISEÑADOR DE EXPERIENCIA DE USUARIO; Budic-PROJECT MANAGER; Budic-TESTER | 24h |
| 162 | 6.3 | Documentación de cierre de proyecto | 6h | 2015-12-13 | 2015-12-16 | 161 | 0d | Croci-ANALISTA FUNCIONAL; Budic-PROJECT MANAGER | 12h |
| 163 | 6.4 | Cerrar el proyecto | 6h | 2015-12-16 | 2015-12-19 | 162 | 0d | Budic-PROJECT MANAGER | 6h |
